# cotizador_lua

How a schedule from MS Project changed from version to version. A marks actual dates.

## Version 1 (saved 2024-09-25)

Note of the change: 18/10/2024 Subiendo Cambios

| ID | WBS | Task | Duration | Start | Finish | Predecessors | Complete | Total float |
| --- | --- | --- | --- | --- | --- | --- | --- | --- |
| 1 | 1 | **Proyecto Cotizador** | 30d | 2024-09-16 09:00 A | 2024-10-25 19:00 |  | 42% | 0d |
| 2 | 1.1 | **Modelos Y BD** | 8.5d | 2024-09-16 09:00 A | 2024-09-26 13:00 |  | 54% | 0.9d |
| 3 | 1.1.1 | **Modelo Usuario** | 1.5d | 2024-09-16 09:00 A | 2024-09-17 13:00 |  | 90% | 0.05d |
| 4 |  | Login | 0.5d | 2024-09-16 09:00 A | 2024-09-16 13:00 |  | 90% | 0.9d |
| 5 |  | CRUD | 1d | 2024-09-16 15:00 A | 2024-09-17 13:00 | 4 | 90% | 0.05d |
| 6 | 1.1.2 | **Modelo Cliente** | 1d | 2024-09-17 15:00 A | 2024-09-18 13:00 |  | 50% | 0.45d |
| 7 |  | Login | 0.5d | 2024-09-17 15:00 A | 2024-09-17 19:00 | 5 | 10% | 0.45d |
| 8 |  | CRUD | 0.5d | 2024-09-18 09:00 A | 2024-09-18 13:00 | 7 | 90% | 0.45d |
| 9 | 1.1.3 | **Modelo Contacto** | 0.5d | 2024-09-18 15:00 A | 2024-09-18 19:00 |  | 90% | 0.45d |
| 10 |  | CRUD | 0.5d | 2024-09-18 15:00 A | 2024-09-18 19:00 | 8 | 90% | 0.45d |
| 11 | 1.1.4 | **Modelo Empresa** | 0.5d | 2024-09-19 09:00 A | 2024-09-19 13:00 |  | 90% | 0.9d |
| 12 |  | CRUD | 0.5d | 2024-09-19 09:00 A | 2024-09-19 13:00 | 10 | 90% | 0.9d |
| 13 | 1.1.5 | **Modelo Cotizacion** | 3d | 2024-09-19 15:00 | 2024-09-24 13:00 |  |  | 0.9d |
| 14 |  | CRUD | 1d | 2024-09-19 15:00 | 2024-09-20 13:00 | 12 |  | 0.9d |
| 15 |  | Detalle CRUD Cotizacion | 1d | 2024-09-20 15:00 | 2024-09-23 13:00 | 14 |  | 0.9d |
| 16 |  | Detalle CRUD Cotizacion Adicional | 1d | 2024-09-23 15:00 | 2024-09-24 13:00 | 15 |  | 0.9d |
| 17 | 1.1.6 | **Modelo Categoria** | 1d | 2024-09-24 15:00 A | 2024-09-25 13:00 |  | 90% | 0.9d |
| 18 |  | CRUD | 1d | 2024-09-24 15:00 A | 2024-09-25 13:00 | 16 | 90% | 0.9d |
| 19 | 1.1.7 | **Modelo Producto** | 1d | 2024-09-25 15:00 A | 2024-09-26 13:00 |  | 90% | 0.9d |
| 20 |  | CRUD | 1d | 2024-09-25 15:00 A | 2024-09-26 13:00 | 18 | 90% | 0.9d |
| 21 | 1.2 | **Controllers** | 7.5d | 2024-09-26 15:00 A | 2024-10-07 19:00 |  | 66% | 0.45d |
| 22 |  | Usuario | 1d | 2024-09-26 15:00 A | 2024-09-27 13:00 | 20 | 90% | 0.9d |
| 23 |  | Cotizacion | 2d | 2024-09-27 15:00 | 2024-10-01 13:00 | 22 |  | 0.9d |
| 24 |  | Producto | 1d | 2024-10-01 15:00 A | 2024-10-02 13:00 | 23 | 90% | 0.9d |
| 25 |  | Categoria | 1d | 2024-10-02 15:00 A | 2024-10-03 13:00 | 24 | 90% | 0.9d |
| 26 |  | Cliente | 1d | 2024-10-03 15:00 A | 2024-10-04 13:00 | 25 | 90% | 0.9d |
| 27 |  | Contacto | 1d | 2024-10-04 15:00 A | 2024-10-07 13:00 | 26 | 90% | 0.45d |
| 28 |  | Empresa | 0.5d | 2024-10-07 15:00 A | 2024-10-07 19:00 | 27 | 90% | 0.45d |
| 29 | 1.3 | **Vistas** | 10d | 2024-10-08 09:00 A | 2024-10-21 19:00 |  | 32% | 0d |
| 30 |  | Login | 0.5d | 2024-10-08 09:00 A | 2024-10-08 13:00 | 20, 28 | 90% | 0.9d |
| 31 |  | Login Cliente | 0.5d | 2024-10-08 15:00 | 2024-10-08 19:00 | 30 |  | 0.9d |
| 32 |  | Mant Usuario | 1d | 2024-10-09 09:00 A | 2024-10-09 19:00 | 31 | 90% | 0.45d |
| 33 |  | Mant Categoria | 0.5d | 2024-10-10 09:00 A | 2024-10-10 13:00 | 32 | 90% | 0.45d |
| 34 |  | Mant Producto | 0.5d | 2024-10-10 15:00 A | 2024-10-10 19:00 | 33 | 90% | 0.45d |
| 35 |  | Mant Cliente | 0.5d | 2024-10-11 09:00 A | 2024-10-11 13:00 | 34 | 90% | 0.45d |
| 36 |  | Mant Contacto | 0.5d | 2024-10-11 15:00 A | 2024-10-11 19:00 | 35 | 90% | 0d |
| 37 |  | Mant Cotizacion | 4d | 2024-10-14 09:00 | 2024-10-17 19:00 | 36 |  | 0d |
| 38 |  | List Cotizacion | 1d | 2024-10-18 09:00 | 2024-10-18 19:00 | 37 |  | 0d |
| 39 |  | List Cotizacion Cliente | 1d | 2024-10-21 09:00 | 2024-10-21 19:00 | 38 |  | 0d |
| 40 | 1.4 | **Pruebas** | 4d | 2024-10-22 09:00 | 2024-10-25 19:00 |  |  | 0d |
| 41 |  | Prueba de Usuario | 2d | 2024-10-22 09:00 | 2024-10-23 19:00 | 39 |  | 0d |
| 42 |  | Corecciones | 2d | 2024-10-24 09:00 | 2024-10-25 19:00 | 41 |  | 0d |

## Version 2 (saved 2024-10-19)

Note of the change: Proyecto final Cotizador

Last finish stays 2024-10-25.

Changed:

| ID | Task | Start | Complete | Total float |
| --- | --- | --- | --- | --- |
| 1 | **Proyecto Cotizador** |  | 42% → 72% |  |
| 2 | **Modelos Y BD** |  | 54% → 83% |  |
| 13 | **Modelo Cotizacion** | 2024-09-19 15:00 A | 0% → 83% |  |
| 14 | CRUD | 2024-09-19 15:00 A | 0% → 90% |  |
| 15 | Detalle CRUD Cotizacion | 2024-09-20 15:00 A | 0% → 90% | 0.9d → 0.7d |
| 16 | Detalle CRUD Cotizacion Adicional | 2024-09-23 15:00 A | 0% → 70% |  |
| 21 | **Controllers** |  | 66% → 90% |  |
| 23 | Cotizacion | 2024-09-27 15:00 A | 0% → 90% |  |
| 29 | **Vistas** |  | 32% → 77% |  |
| 37 | Mant Cotizacion | 2024-10-14 09:00 A | 0% → 90% | 0d → 0.9d |
| 38 | List Cotizacion | 2024-10-18 09:00 A | 0% → 90% |  |
